# Proyecto,n,t

How a schedule from MS Project changed from version to version. A marks actual dates.

## Version 1 (saved 2019-06-05, file Proyecto,n,t.mpp)

Note of the change: chore: se agrego diagrama de gant con project

| ID | WBS | Task | Duration | Start | Finish | Predecessors | Complete | Total float | Constraint |
| --- | --- | --- | --- | --- | --- | --- | --- | --- | --- |
| 1 | 1 | **Proyecto** | 368.47d | 2019-02-04 A | 2020-07-03 |  | 12% | 0d |  |
| 2 | 1.1 | **Analisis** | 54.35d | 2019-02-04 A | 2019-04-19 |  | 75% | 314.12d |  |
| 3 |  | presentacion del proyecto | 4.49d | 2019-02-04 A | 2019-02-08 |  | 75% | 363.99d | finish no earlier than 2019-02-08 |
| 4 |  | Levantamiento de Información | 10.83d | 2019-02-11 A | 2019-02-26 |  | 75% | 352.66d | start no earlier than 2019-02-11 |
| 5 |  | Diagrama BPMN | 9.47d | 2019-02-25 A | 2019-03-08 |  | 75% | 344.04d | start no earlier than 2019-02-25 |
| 6 |  | Historias de usuario | 4.49d | 2019-03-11 A | 2019-03-15 |  | 75% | 339.06d | finish no earlier than 2019-03-15 |
| 7 |  | Diagrama de casos de uso | 9.47d | 2019-03-18 A | 2019-03-29 |  | 75% | 329.08d | finish no earlier than 2019-03-29 |
| 8 |  | Diagrama casos de uso extendidos | 9.47d | 2019-04-01 A | 2019-04-12 |  | 75% | 319.11d | start no earlier than 2019-04-01 |
| 9 |  | Elavoracion de control de verciones | 4.49d | 2019-04-15 A | 2019-04-19 |  | 75% | 314.12d | finish no earlier than 2019-04-19 |
| 10 | 1.2 | **Diseño** | 53.35d | 2019-04-23 | 2019-07-05 |  |  | 259.28d |  |
| 11 |  | Modelo entidad relación | 3.49d | 2019-04-23 | 2019-04-26 |  |  | 309.14d | finish no earlier than 2019-04-26 |
| 12 |  | Diccionario de datos | 4.49d | 2019-04-29 | 2019-05-03 |  |  | 304.15d | finish no earlier than 2019-05-03 |
| 13 |  | Cronograma de presupuesto | 2.67d | 2019-05-06 | 2019-05-09 |  |  | 300.99d | start no earlier than 2019-05-06 |
| 14 |  | Diagrama de distribucion | 9.47d | 2019-05-13 | 2019-05-24 |  |  | 289.19d | start no earlier than 2019-05-13 |
| 15 |  | Diagrama de clases | 9.47d | 2019-05-27 | 2019-06-07 |  |  | 279.22d | start no earlier than 2019-05-27 |
| 16 |  | Formato de casos | 4.49d | 2019-06-10 | 2019-06-14 |  |  | 274.24d | finish no earlier than 2019-06-14 |
| 17 |  | Prototipo de interfas"mockups" | 9.47d | 2019-06-17 | 2019-06-28 |  |  | 264.26d | finish no earlier than 2019-06-28 |
| 18 |  | Normalizacion de el diagrama entidad relación | 4.49d | 2019-07-01 | 2019-07-05 |  |  | 259.28d | finish no earlier than 2019-07-05 |
| 19 | 1.3 | **Desarrollo** | 54.35d | 2019-07-22 | 2019-10-04 |  |  | 194.46d |  |
| 20 |  | Inventario del sistema de información | 14.46d | 2019-07-22 | 2019-08-09 |  |  | 210.42d | finish no earlier than 2019-08-09 |
| 21 |  | Sistema de integracion continua | 14.46d | 2019-08-12 | 2019-08-30 | 20 |  | 209.92d | start no earlier than 2019-08-12 |
| 22 |  | Construccion de bases de datos | 9.47d | 2019-09-02 | 2019-09-13 | 21 |  | 209.42d | start no earlier than 2019-09-02 |
| 23 |  | Implementacion de sentencia dml | 9.47d | 2019-09-16 | 2019-09-27 |  |  | 198.64d | start no earlier than 2019-09-16 |
| 24 |  | Prototipo funcional usando css | 0.8d | 2019-09-30 | 2019-09-30 | 23 |  | 198.45d | finish no earlier than 2019-09-30 |
| 25 |  | Iinformes de costos | 3.49d | 2019-10-01 | 2019-10-04 |  |  | 194.46d | finish no earlier than 2019-10-04 |
| 26 | 1.4 | **Implementacion** | 52.35d | 2019-10-07 | 2019-12-18 |  |  | 133.99d |  |
| 27 |  | Manual tecnico | 7.48d | 2019-10-07 | 2019-10-16 |  |  | 133.99d | finish no earlier than 2019-10-16 |
| 28 |  | Evidencias de tecnicas de acople | 4.49d | 2019-10-17 | 2019-10-23 | 27 |  | 133.49d | finish no earlier than 2019-10-23 |
| 29 |  | instalacion del aplicativo | 12d | 2019-10-24 | 2019-11-11 | 28 |  | 153.01d |  |
| 30 |  | Implementacion de diagrama de distribucion | 12d | 2019-11-11 | 2019-11-27 | 29 |  | 153.01d |  |
| 31 |  | Informe de migracion de datos | 4.49d | 2019-12-02 | 2019-12-06 | 30 |  | 149.58d | finish no earlier than 2019-12-06 |
| 32 |  | evidencias de instalacon plan de respaldo y migracion | 7.48d | 2019-12-09 | 2019-12-18 | 21 |  | 141.61d | finish no earlier than 2019-12-18 |
| 33 | 1.5 | **Pruebas** | 53.35d | 2020-02-04 | 2020-04-17 |  |  | 54.85d |  |
| 34 |  | Cuadro comparativo de provedores | 26.67d | 2020-02-04 | 2020-03-12 |  |  | 54.85d | start no earlier than 2020-02-04 |
| 35 |  | Contratos de sofware | 26.67d | 2020-03-12 | 2020-04-17 | 34 |  | 54.85d | finish no earlier than 2020-04-01 |
| 36 |  | Documentacion de pruebas | 0.02d | 2020-04-17 | 2020-04-17 | 35 |  | 54.85d | finish no earlier than 2020-04-17 |
| 37 | 1.6 | **Calidad** | 181.49d | 2019-10-24 | 2020-07-03 |  |  | 0d |  |
| 38 |  | Evidencia modelo de calidad | 26.67d | 2020-04-20 | 2020-05-27 |  |  | 27.68d | start no earlier than 2020-04-20 |
| 39 |  | Evidencias del proyecto terminado | 22.67d | 2019-10-24 | 2019-11-25 | 28 |  | 133.49d |  |
| 40 |  | Evidencias de manuial de usuario y de operación | 25.33d | 2020-05-29 | 2020-07-03 | 39 |  | 0d | finish no earlier than 2020-07-03 |

## Version 2 (saved 2019-06-06, file Proyecto,n,t.mpp)

Note of the change: docs: se elimina pdf hoja de costos

Last finish stays 2020-07-03. Complete tasks 0 → 11.

Added:

| ID | Task | Duration | Start | Finish | Predecessors | Constraint | Resources |
| --- | --- | --- | --- | --- | --- | --- | --- |
| 19 | Periodo no laborable | 9.97d? | 2019-07-08 | 2019-07-19 | 10 | start no earlier than 2019-07-08 | brandon garzon; cristian barrios; daniel martinez; jhon gonzalez |
| 34 | Periodo no laborable | 32.91d? | 2019-12-19 | 2020-02-03 | 27 | finish no earlier than 2020-02-03 | brandon garzon; cristian barrios; daniel martinez; jhon gonzalez |

Changed:

| ID | Task | Start | Finish | Duration | Complete | Total float | Predecessors | Other |
| --- | --- | --- | --- | --- | --- | --- | --- | --- |
| 1 | **Proyecto** |  |  | 368.47d → 368.47d? | 12% → 21% |  |  |  |
| 2 | **Analisis** |  | 2019-04-19 A |  | 75% → 100% | 314.12d → none |  | resources none → brandon garzon; computador 1; computador2; electricidad; internet; jhon gonzalez; sofware; usb |
| 3 | presentacion del proyecto |  | 2019-02-08 A |  | 75% → 100% | 363.99d → none |  | resources brandon garzon; cristian barrios; daniel martinez; jhon gonzalez → none |
| 4 | Levantamiento de Información |  | 2019-02-26 A |  | 75% → 100% | 352.66d → none | none → 3 | resources brandon garzon; cristian barrios; daniel martinez; jhon gonzalez; computador 1; internet; sofware → none |
| 5 | Diagrama BPMN |  | 2019-03-08 A |  | 75% → 100% | 344.04d → none | none → 4 | resources brandon garzon; computador 1; computador 3; computador2; computador4; cristian barrios; daniel martinez; internet; jhon gonzalez; sofware → none |
| 6 | Historias de usuario |  | 2019-03-15 A |  | 75% → 100% | 339.06d → none | none → 5 | resources brandon garzon; computador 1; computador 3; computador2; computador4; cristian barrios; daniel martinez; internet; jhon gonzalez; sofware → none |
| 7 | Diagrama de casos de uso |  | 2019-03-29 A |  | 75% → 100% | 329.08d → none | none → 6 | resources brandon garzon; computador 1; computador 3; computador2; computador4; cristian barrios; daniel martinez; electricidad; internet; jhon gonzalez; sofware → none |
| 8 | Diagrama casos de uso extendidos |  | 2019-04-12 A |  | 75% → 100% | 319.11d → none | none → 7 | resources brandon garzon; computador 1; computador 3; computador2; computador4; cristian barrios; daniel martinez; electricidad; internet; jhon gonzalez; sofware → none |
| 9 | Elavoracion de control de verciones |  | 2019-04-19 A |  | 75% → 100% | 314.12d → none | none → 8 | resources brandon garzon; computador 1; computador 3; computador2; computador4; cristian barrios; daniel martinez; electricidad; internet; jhon gonzalez; sofware → none |
| 10 | **Diseño** | 2019-04-23 A |  |  | 0% → 50% | 259.28d → 14.97d | none → 2 | resources none → computador 1; computador 3; computador2; computador4; cristian barrios; daniel martinez; electricidad; internet; sofware; usb |
| 11 | Modelo entidad relación | 2019-04-23 A | 2019-04-26 A |  | 0% → 100% | 309.14d → none |  | resources brandon garzon; computador 1; computador 3; computador2; computador4; cristian barrios; daniel martinez; electricidad; internet; jhon gonzalez; sofware → none |
| 12 | Diccionario de datos | 2019-04-29 A | 2019-05-03 A |  | 0% → 100% | 304.15d → none | none → 11 | resources brandon garzon; computador 1; computador 3; computador2; computador4; cristian barrios; daniel martinez; electricidad; internet; jhon gonzalez; sofware → none |
| 13 | Cronograma de presupuesto | 2019-05-06 A | 2019-05-09 A |  | 0% → 100% | 300.99d → none | none → 12 | resources brandon garzon; computador 1; computador 3; computador2; computador4; cristian barrios; daniel martinez; electricidad; internet; jhon gonzalez; sofware → none |
| 14 | Diagrama de distribucion | 2019-05-13 A | 2019-05-24 A |  | 0% → 100% | 289.19d → none | none → 13 | resources brandon garzon; computador 1; computador 3; computador2; computador4; cristian barrios; daniel martinez; electricidad; internet; jhon gonzalez; sofware → none |
| 15 | Diagrama de clases | 2019-05-27 A |  |  | 0% → 41% | 279.22d → 16.47d | none → 14 | resources brandon garzon; computador 1; computador 3; computador2; computador4; cristian barrios; daniel martinez; electricidad; internet; jhon gonzalez; sofware → none |
| 16 | Formato de casos |  |  |  |  | 274.24d → 15.97d | none → 15 | resources brandon garzon; computador 1; computador 3; computador2; computador4; cristian barrios; daniel martinez; electricidad; internet; jhon gonzalez; sofware → none |
| 17 | Prototipo de interfas"mockups" |  |  |  |  | 264.26d → 15.47d | none → 16 | resources brandon garzon; computador 1; computador 3; computador2; computador4; cristian barrios; daniel martinez; electricidad; internet; jhon gonzalez; sofware → none |
| 18 | Normalizacion de el diagrama entidad relación |  |  |  |  | 259.28d → 14.97d | none → 17 | resources brandon garzon; computador 1; computador 3; computador2; computador4; cristian barrios; daniel martinez; electricidad; internet; jhon gonzalez; sofware → none |
| 20 | **Desarrollo** |  |  |  |  | 194.46d → 12.27d | none → 19 | resources none → brandon garzon; computador 1; computador 3; computador2; computador4; cristian barrios; daniel martinez; electricidad; internet; jhon gonzalez; sofware; usb |
| 21 | Inventario del sistema de información |  |  |  |  | 210.42d → 14.47d |  | resources brandon garzon; computador 1; computador 3; computador2; computador4; cristian barrios; daniel martinez; electricidad; internet; jhon gonzalez; sofware → none |
| 22 | Sistema de integracion continua |  |  |  |  | 209.92d → 13.97d |  | resources brandon garzon; computador 1; computador 3; computador2; computador4; cristian barrios; daniel martinez; electricidad; internet; jhon gonzalez; sofware → none |
| 23 | Construccion de bases de datos |  |  |  |  | 209.42d → 13.47d |  | resources brandon garzon; computador 1; computador 3; computador2; computador4; cristian barrios; daniel martinez; electricidad; internet; jhon gonzalez; sofware → none |
| 24 | Implementacion de sentencia dml |  |  |  |  | 198.64d → 12.97d | none → 23 | resources brandon garzon; computador 1; computador 3; computador2; computador4; cristian barrios; daniel martinez; electricidad; internet; jhon gonzalez; sofware → none |
| 25 | Prototipo funcional usando css |  |  |  |  | 198.45d → 12.77d |  | resources brandon garzon; computador 1; computador 3; computador2; computador4; cristian barrios; daniel martinez; electricidad; internet; jhon gonzalez; sofware → none |
| 26 | Iinformes de costos |  |  |  |  | 194.46d → 12.27d | none → 25 | resources brandon garzon; computador 1; computador 3; computador2; computador4; cristian barrios; daniel martinez; electricidad; internet; jhon gonzalez; sofware → none |
| 27 | **Implementacion** |  |  |  |  | 133.99d → 7.35d | none → 20 | resources none → computador 1; computador 3; computador2; computador4; cristian barrios; daniel martinez; electricidad; internet; sofware; usb |
| 28 | Manual tecnico |  |  |  |  | 133.99d → 11.77d |  | resources brandon garzon; computador 1; computador 3; computador2; computador4; cristian barrios; daniel martinez; electricidad; internet; jhon gonzalez; sofware → none |
| 29 | Evidencias de tecnicas de acople |  |  |  |  | 133.49d → 11.27d |  | resources brandon garzon; computador 1; computador 3; computador2; computador4; cristian barrios; daniel martinez; electricidad; internet; jhon gonzalez; sofware → none |
| 30 | instalacion del aplicativo |  |  |  |  | 153.01d → 11.27d |  | resources brandon garzon; computador 1; computador 3; computador2; computador4; cristian barrios; daniel martinez; electricidad; internet; jhon gonzalez; sofware; usb → none |
| 31 | Implementacion de diagrama de distribucion |  |  |  |  | 153.01d → 11.27d |  | resources brandon garzon; computador 1; computador 3; computador2; computador4; cristian barrios; daniel martinez; electricidad; internet; jhon gonzalez; sofware → none |
| 32 | Informe de migracion de datos |  |  |  |  | 149.58d → 7.85d |  | resources brandon garzon; computador 1; computador 3; computador2; computador4; cristian barrios; daniel martinez; electricidad; internet; jhon gonzalez; sofware → none |
| 33 | evidencias de instalacon plan de respaldo y migracion |  |  |  |  | 141.61d → 7.35d | 22 → 32 | resources brandon garzon; computador 1; computador 3; computador2; computador4; cristian barrios; daniel martinez; electricidad; internet; jhon gonzalez; sofware; usb → none |
| 35 | **Pruebas** |  |  |  |  | 54.85d → 6.85d | none → 34 | resources none → brandon garzon; computador 1; computador2; electricidad; internet; jhon gonzalez; sofware; usb |
| 36 | Cuadro comparativo de provedores |  |  |  |  | 54.85d → 6.85d |  | resources brandon garzon; computador 1; computador 3; computador2; computador4; cristian barrios; jhon gonzalez → none |
| 37 | Contratos de sofware |  |  |  |  | 54.85d → 6.85d |  | resources brandon garzon; computador 1; computador 3; computador2; computador4; cristian barrios; daniel martinez; electricidad; internet; jhon gonzalez; sofware → computador 1; cristian barrios; daniel martinez; electricidad; internet; sofware; usb |
| 38 | Documentacion de pruebas |  |  |  |  | 54.85d → 6.85d |  | resources brandon garzon; computador 1; computador 3; computador2; computador4; cristian barrios; daniel martinez; electricidad; internet; jhon gonzalez; sofware; usb → none |
| 39 | **Calidad** | 2019-10-24 → 2020-04-20 (+179d) |  | 181.49d → 54.85d |  |  | none → 35 |  |
| 40 | Evidencia modelo de calidad |  |  |  |  |  |  | resources brandon garzon; computador 1; computador 3; computador2; computador4; cristian barrios; daniel martinez; electricidad; internet; jhon gonzalez; sofware → none |
| 41 | Evidencias del proyecto terminado | 2019-10-24 → 2020-04-20 (+179d) | 2019-11-25 → 2020-05-20 (+177d) |  |  | 133.49d → 6.85d |  | resources brandon garzon; computador 1; computador 3; computador2; computador4; cristian barrios; daniel martinez; electricidad; internet; jhon gonzalez; sofware → none |
| 42 | Evidencias de manuial de usuario y de operación |  |  |  |  |  |  | resources brandon garzon; computador 1; computador 3; computador2; computador4; cristian barrios; daniel martinez; electricidad; internet; jhon gonzalez; sofware → none |

## Version 3 (saved 2019-06-18, file Proyecto,N,T.mpp)

Note of the change: chore: se modifico editable diagrama de gant

Last finish stays 2020-07-03. Complete tasks 11 → 15.

Changed:

| ID | Task | Start | Finish | Complete | Total float |
| --- | --- | --- | --- | --- | --- |
| 1 | **Proyecto** |  |  | 21% → 27% |  |
| 10 | **Diseño** |  | 2019-07-05 A | 50% → 100% | 14.97d → none |
| 15 | Diagrama de clases |  | 2019-06-07 A | 41% → 100% | 16.47d → none |
| 16 | Formato de casos | 2019-06-10 A | 2019-06-14 A | 0% → 100% | 15.97d → none |
| 17 | Prototipo de interfas"mockups" | 2019-06-17 A | 2019-06-28 A | 0% → 100% | 15.47d → none |
| 18 | Normalizacion de el diagrama entidad relación | 2019-07-01 A | 2019-07-05 A | 0% → 100% | 14.97d → none |

## Version 4 (saved 2019-12-16, file Proyecto,N,T.mpp)

Note of the change: Chore:se agregaron archivos

Last finish stays 2020-07-03. Complete tasks 15 → 32.

Changed:

| ID | Task | Start | Finish | Complete | Total float |
| --- | --- | --- | --- | --- | --- |
| 1 | **Proyecto** |  |  | 27% → 80% |  |
| 19 | Periodo no laborable | 2019-07-08 A | 2019-07-19 A | 0% → 100% | 14.97d → none |
| 20 | **Desarrollo** | 2019-07-22 A | 2019-10-04 A | 0% → 100% | 12.27d → none |
| 21 | Inventario del sistema de información | 2019-07-22 A | 2019-08-09 A | 0% → 100% | 14.47d → none |
| 22 | Sistema de integracion continua | 2019-08-12 A | 2019-08-30 A | 0% → 100% | 13.97d → none |
| 23 | Construccion de bases de datos | 2019-09-02 A | 2019-09-13 A | 0% → 100% | 13.47d → none |
| 24 | Implementacion de sentencia dml | 2019-09-16 A | 2019-09-27 A | 0% → 100% | 12.97d → none |
| 25 | Prototipo funcional usando css | 2019-09-30 A | 2019-09-30 A | 0% → 100% | 12.77d → none |
| 26 | Iinformes de costos | 2019-10-01 A | 2019-10-04 A | 0% → 100% | 12.27d → none |
| 27 | **Implementacion** | 2019-10-07 A | 2019-12-18 A | 0% → 100% | 7.35d → none |
| 28 | Manual tecnico | 2019-10-07 A | 2019-10-16 A | 0% → 100% | 11.77d → none |
| 29 | Evidencias de tecnicas de acople | 2019-10-17 A | 2019-10-23 A | 0% → 100% | 11.27d → none |
| 30 | instalacion del aplicativo | 2019-10-24 A | 2019-11-11 A | 0% → 100% | 11.27d → none |
| 31 | Implementacion de diagrama de distribucion | 2019-11-11 A | 2019-11-27 A | 0% → 100% | 11.27d → none |
| 32 | Informe de migracion de datos | 2019-12-02 A | 2019-12-06 A | 0% → 100% | 7.85d → none |
| 33 | evidencias de instalacon plan de respaldo y migracion | 2019-12-09 A | 2019-12-18 A | 0% → 100% | 7.35d → none |
| 34 | Periodo no laborable | 2019-12-19 A | 2020-02-03 A | 0% → 100% | 7.35d → none |
| 35 | **Pruebas** | 2020-02-04 A | 2020-04-17 A | 0% → 100% | 6.85d → none |
| 36 | Cuadro comparativo de provedores | 2020-02-04 A | 2020-03-12 A | 0% → 100% | 6.85d → none |
| 37 | Contratos de sofware | 2020-03-12 A | 2020-04-17 A | 0% → 100% | 6.85d → none |
| 38 | Documentacion de pruebas | 2020-04-17 A | 2020-04-17 A | 0% → 100% | 6.85d → none |

## Version 5 (saved 2020-06-24, file Proyecto,N,T.mpp)

Note of the change: Docs: Se agrega editable del diagrama de gantt

Last finish stays 2020-07-03. Complete tasks 32 → 35.

Changed:

| ID | Task | Start | Finish | Complete | Total float | Other |
| --- | --- | --- | --- | --- | --- | --- |
| 1 | **Proyecto** |  | 2020-07-03 A | 80% → 100% | 0d → none |  |
| 39 | **Calidad** | 2020-04-20 A | 2020-07-03 A | 0% → 100% | 0d → none |  |
| 40 | Evidencia modelo de calidad | 2020-04-20 A | 2020-05-27 A | 0% → 100% | 27.68d → none | resources none → Costos relacionados a la calidad |
| 41 | Evidencias del proyecto terminado | 2020-04-20 A | 2020-05-20 A | 0% → 100% | 6.85d → none | resources none → Hosting |
| 42 | Evidencias de manuial de usuario y de operación | 2020-05-29 A | 2020-07-03 A | 0% → 100% | 0d → none |  |
